# eBaja27

Schedule from MS Project XML, 2026-02-02 to 2027-02-15, 1 hours a day.

## Calendars

- Standard: Mon-Sun 13:00-14:00. Exceptions (off unless hours are given): 2026-04-20 to 2026-05-01.

## Resources

| Resource |
| --- |
| Unassigned |

## Schedule

| ID | WBS | Task | Duration | Start | Finish | Predecessors | Baseline 1 start | Baseline 1 finish | Constraint |
| --- | --- | --- | --- | --- | --- | --- | --- | --- | --- |
| 1 | 1 | **Moksha27** | 367d? | 2026-02-02 | 2027-02-15 |  | 2026-02-14 | 2026-09-27 | as late as possible |
| 2 | 1.1 | Decide the driver | 5d? | 2026-04-06 | 2026-04-10 |  | 1970-01-01 | 1970-01-01 | must start on 2026-04-06 |
| 3 | 1.2 | CAD Assembly | 10d | 2026-06-01 | 2026-06-10 |  | 1970-01-01 | 1970-01-01 | must start on 2026-06-01 |
| 4 | 1.3 | **Brakes** | 117d | 2026-03-30 | 2026-08-05 |  | 2026-03-27 | 2026-05-16 | start no earlier than 2026-03-27 |
| 5 | 1.3.1 | Training Juniors | 7d | 2026-04-13 | 2026-04-19 | 184 |  |  |  |
| 6 | 1.3.2 | Brakes Calcs | 14d | 2026-03-30 | 2026-04-12 |  | 2026-03-27 | 2026-04-09 | start no earlier than 2026-03-30 |
| 7 | 1.3.3 | decide what can be reused | 2d | 2026-04-13 | 2026-04-14 | 6 | 1970-01-01 | 1970-01-01 |  |
| 8 | 1.3.4 | Design Parts | 7d | 2026-05-02 | 2026-05-08 | 5, 6 | 2026-04-10 | 2026-04-16 |  |
| 9 | 1.3.5 | Finalize oems | 7d | 2026-05-09 | 2026-05-15 | 7, 8 | 2026-04-17 | 2026-04-23 |  |
| 10 | 1.3.6 | contact vendors for quotes | 7d | 2026-05-16 | 2026-05-22 | 9 | 2026-04-17 | 2026-04-23 |  |
| 11 | 1.3.7 | Finalize vendors for orders | 1d | 2026-05-23 | 2026-05-23 | 10 | 2026-03-29 | 2026-03-29 |  |
| 12 | 1.3.8 | procurement of OEMs | 30d | 2026-05-24 | 2026-06-22 | 11 | 2026-04-17 | 2026-05-16 |  |
| 13 | 1.3.9 | Procurement of Custom Parts | 30d | 2026-05-25 | 2026-06-23 | 59 |  |  |  |
| 14 | 1.3.10 | design & order mounts | 7d | 2026-06-11 | 2026-06-17 | 3, 30 |  |  |  |
| 15 | 1.3.11 | design+manufacture jigs for testing | 14d | 2026-06-18 | 2026-07-01 | 14 | 2026-04-04 | 2026-04-10 |  |
| 16 | 1.3.12 | assembly on jigs | 14d | 2026-07-02 | 2026-07-15 | 12, 13, 15 | 2026-04-05 | 2026-04-14 |  |
| 17 | 1.3.13 | Brake biasing calculations | 3d | 2026-07-16 | 2026-07-18 | 16 | 2026-04-15 | 2026-05-14 |  |
| 18 | 1.3.14 | Assembly on car | 7d | 2026-07-30 | 2026-08-05 | 16, 47, 134, 161 |  |  |  |
| 20 | 1.4 | **Chassis** | 130d | 2026-02-06 | 2026-06-27 |  | 2026-03-09 | 2026-05-13 | start no earlier than 2026-03-09 |
| 21 | 1.4.1 | Training Juniors | 7d | 2026-04-13 | 2026-04-19 | 184 |  |  |  |
| 22 | 1.4.2 | Decide the driver posture (Ergo-Jigs) | 6d | 2026-03-28 | 2026-04-02 | 2 | 2026-03-10 | 2026-03-16 | must start on 2026-03-28 |
| 23 | 1.4.3 | Decide Material for tubes | 2d | 2026-04-03 | 2026-04-04 | 22 |  |  | must start on 2026-04-03 |
| 24 | 1.4.4 | Fix the primary and secondary pipe diameter | 5d | 2026-04-03 | 2026-04-07 | 23 | 2026-03-09 | 2026-03-15 | must start on 2026-04-03 |
| 25 | 1.4.5 | Design the rollcage in CAD -1 | 14d | 2026-04-15 | 2026-05-10 | 24, 107 | 2026-03-16 | 2026-04-04 |  |
| 26 | 1.4.6 | Verification of dimensions and clearances from rulebook | 2d | 2026-05-11 | 2026-05-12 | 21, 25 |  |  |  |
| 27 | 1.4.7 | Make a list of straight tubes with contingency | 5d | 2026-05-13 | 2026-05-17 | 25, 26 |  |  |  |
| 28 | 1.4.8 | Order tubes | 30d | 2026-05-18 | 2026-06-16 | 27 |  |  |  |
| 29 | 1.4.9 | Design rollcage iter2 | 7d | 2026-05-05 | 2026-05-11 | 55 |  |  |  |
| 30 | 1.4.10 | Decide the mounting positions of other subsystems | 14d | 2026-05-12 | 2026-05-25 | 29 | 1970-01-01 | 1970-01-01 |  |
| 31 | 1.4.11 | Design body panels, seat, extinguisher, harness, firewall, tow hitch mounts | 5d | 2026-05-12 | 2026-05-16 | 29 |  |  |  |
| 32 | 1.4.12 | design rollcage iter3 | 3d | 2026-03-09 | 2026-03-11 | 56 |  |  |  |
| 33 | 1.4.13 | Make list of mounts and place order | 14d | 2026-05-17 | 2026-05-30 | 31 |  |  |  |
| 34 | 1.4.14 | Make a list of bent tubes and welding material | 3d | 2026-03-12 | 2026-03-14 | 32 | 2026-04-12 | 2026-04-14 |  |
| 35 | 1.4.15 | Order and Procure bent tubes | 20d | 2026-03-15 | 2026-04-03 | 34 | 2026-04-15 | 2026-05-04 |  |
| 36 | 1.4.16 | Design jigs for the rollcage | 14d | 2026-03-12 | 2026-03-25 | 32 | 1970-01-01 | 1970-01-01 |  |
| 37 | 1.4.17 | Decide and procure material for jigs | 10d | 2026-03-26 | 2026-04-04 | 36 | 2026-03-23 | 2026-03-27 |  |
| 38 | 1.4.18 | Cutting, Notching of primary tubes | 4d | 2026-04-12 | 2026-04-15 | 39 | 1970-01-01 | 1970-01-01 |  |
| 39 | 1.4.19 | Manufacturing Jigs | 7d | 2026-04-05 | 2026-04-11 | 37 | 2026-03-28 | 2026-04-03 |  |
| 40 | 1.4.20 | Cutting, Notching of secondary and tertiary tubes | 4d | 2026-04-16 | 2026-04-19 | 38 | 2026-04-04 | 2026-04-07 |  |
| 41 | 1.4.21 | Tack weld the whole assembly and check for the clearances as stated in the rulebook | 5d | 2026-05-02 | 2026-05-06 | 40 | 2026-04-07 | 2026-04-13 |  |
| 42 | 1.4.22 | Order body panel material/firewall/seat with contingency | 20d | 2026-03-12 | 2026-03-31 | 32 | 1970-01-01 | 1970-01-01 |  |
| 43 | 1.4.23 | Order foam, heatx for seat | 2d | 2026-04-01 | 2026-04-02 | 42 |  |  |  |
| 44 | 1.4.24 | Fabricate Body panels + firewall | 15d | 2026-05-07 | 2026-05-21 | 41 | 1970-01-01 | 1970-01-01 |  |
| 45 | 1.4.25 | welding the mounts on the rollcage | 10d | 2026-02-06 | 2026-02-15 | 33 |  |  | as late as possible |
| 46 | 1.4.26 | Welding the complete rollcage (along with all suspension mounts) | 15d | 2026-05-07 | 2026-05-21 | 41 | 2026-04-14 | 2026-05-13 |  |
| 47 | 1.4.27 | Seat fabrication | 7d | 2026-04-01 | 2026-04-07 | 42 | 2026-04-14 | 2026-04-28 |  |
| 48 | 1.4.28 | Livery design | 30d | 2026-05-22 | 2026-06-20 | 44 |  |  |  |
| 49 | 1.4.29 | Painting car | 7d | 2026-06-21 | 2026-06-27 | 48 | 2026-04-29 | 2026-05-01 |  |

Notes:
- 18: Find it's dependencies
- 25: Make Nose. Use weldments not sweep for making chassis designs.

| ID | WBS | Task | Duration | Start | Finish | Predecessors | Baseline 1 start | Baseline 1 finish | Constraint |
| --- | --- | --- | --- | --- | --- | --- | --- | --- | --- |
| 51 | 1.5 | **CAE** | 219d? | 2026-03-16 | 2026-11-01 |  | 2026-03-16 | 2026-07-26 | start no earlier than 2026-03-16 |
| 52 | 1.5.1 | Train Juniors | 10d | 2026-04-13 | 2026-05-04 | 184 |  |  |  |
| 53 | 1.5.2 | Study the rulebook | 4d? | 2026-04-06 | 2026-04-09 |  | 2026-03-16 | 2026-03-19 | must start on 2026-04-06 |
| 54 | 1.5.3 | Define structural, dynamic and thermal load cases | 10d | 2026-04-10 | 2026-04-19 | 53 | 2026-03-20 | 2026-03-29 |  |
| 55 | 1.5.4 | Roll cage static, impact and torsion analysis - 1 | 3d | 2026-05-02 | 2026-05-04 | 54 |  |  |  |
| 56 | 1.5.5 | Roll cage static, impact and torsion analysis - 2 | 3d | 2026-05-12 | 2026-05-14 | 29 | 2026-03-16 | 2026-04-01 |  |
| 57 | 1.5.6 | Roll cage static, impact and torsion analysis - 3 | 3d | 2026-03-16 | 2026-03-18 | 32 |  |  |  |
| 58 | 1.5.7 | Vehicle dynamics model and dynamic load derivation | 20d | 2026-05-10 | 2026-05-29 | 110 | 2026-06-07 | 2026-06-26 |  |
| 59 | 1.5.8 | Analysis of Brakes | 9d? | 2026-05-16 | 2026-05-24 | 9 | 2026-04-24 | 2026-05-02 |  |
| 60 | 1.5.9 | Analysis of Suspension | 5d? | 2026-05-20 | 2026-05-24 | 112 | 2026-06-07 | 2026-06-11 |  |
| 61 | 1.5.10 | Analysis of Steering | 5d | 2026-03-27 | 2026-03-31 | 131 | 2026-07-22 | 2026-07-26 |  |
| 62 | 1.5.11 | Accumulator mechanical + basic thermal analysis | 6d | 2026-05-15 | 2026-05-20 | 52 | 2026-03-16 | 2026-04-04 | must start on 2026-05-15 |
| 63 | 1.5.12 | Final CAE Report + Presentation Preparation | 93d | 2026-08-01 | 2026-11-01 | 54, 58 | 2026-03-16 | 2026-04-29 | must start on 2026-08-01 |
| 65 | 1.6 | **Electrical Powertrain** | 246d | 2026-02-02 | 2026-10-17 |  | 2026-02-15 | 2026-05-11 | start no earlier than 2026-01-14 |
| 66 | 1.6.1 | Read rulebook | 30d | 2026-04-06 | 2026-05-17 |  |  |  | must start on 2026-04-06 |
| 67 | 1.6.2 | Run tests on motor, and gather data | 14d | 2026-02-02 | 2026-02-15 |  |  |  | start no earlier than 2026-02-02 |
| 68 | 1.6.3 | Finalize Problem in existing Motor | 30d | 2026-02-16 | 2026-03-17 | 67 | 2026-02-15 | 2026-02-17 |  |
| 69 | 1.6.4 | Send logs to Naxatra and debug the problem | 45d | 2026-03-18 | 2026-05-13 | 68 | 2026-02-18 | 2026-04-20 |  |
| 70 | 1.6.5 | Check the existing components of the circuit, and research if any new components need to be added | 7d | 2026-05-12 | 2026-05-18 |  | 2026-04-21 | 2026-04-25 | must start on 2026-05-12 |
| 71 | 1.6.6 | Circuit Design: Make a circuit moving most of the components into the PCB and test on breadboard | 15d | 2026-05-19 | 2026-06-02 | 66, 70 | 2026-02-15 | 2026-02-27 |  |
| 72 | 1.6.7 | Study the Existing PCB | 7d | 2026-05-12 | 2026-05-18 |  | 2026-02-28 | 2026-03-27 | must start on 2026-05-12 |
| 73 | 1.6.8 | PCB Design: Learning and finalizing what components must go into PCB | 10d | 2026-05-19 | 2026-05-28 | 72 | 2026-03-28 | 2026-04-04 |  |
| 74 | 1.6.9 | Start Schematic of the PCB | 7d | 2026-05-29 | 2026-06-04 | 73 | 2026-02-15 | 2026-02-22 |  |
| 75 | 1.6.10 | Make the layout of the PCB | 7d | 2026-06-05 | 2026-06-11 | 74 | 2026-02-23 | 2026-04-25 |  |
| 76 | 1.6.11 | Manufacture of PCB: Ordering the PCB | 1d | 2026-06-12 | 2026-06-12 | 75 | 2026-04-26 | 2026-05-11 |  |
| 77 | 1.6.12 | Finalize all components and place order | 20d | 2026-06-13 | 2026-07-02 | 71, 76 |  |  |  |
| 78 | 1.6.13 | PCB arriving and collecting | 20d | 2026-06-13 | 2026-07-02 | 76 | 1970-01-01 | 1970-01-01 |  |
| 79 | 1.6.14 | Soldering of the PCB | 5d | 2026-07-03 | 2026-07-07 | 78 | 1970-01-01 | 1970-01-01 |  |
| 80 | 1.6.15 | Checking if the PCB is functioning properly, by testing. | 10d | 2026-07-08 | 2026-07-17 | 79 | 1970-01-01 | 1970-01-01 |  |
| 81 | 1.6.16 | Studying the existing code | 7d | 2026-05-20 | 2026-05-26 |  | 1970-01-01 | 1970-01-01 | must start on 2026-05-20 |
| 82 | 1.6.17 | Microcontroller:Write code for esp | 5d | 2026-05-27 | 2026-05-31 | 81 | 1970-01-01 | 1970-01-01 |  |
| 83 | 1.6.18 | Testing the ESP code on breadboard with components | 7d | 2026-06-01 | 2026-06-07 | 82 | 1970-01-01 | 1970-01-01 |  |
| 84 | 1.6.19 | Testing: Motor+Motor Controller | 30d | 2026-06-20 | 2026-07-19 | 145 | 1970-01-01 | 1970-01-01 |  |
| 85 | 1.6.20 | Making the electrical circuit | 7d | 2026-07-18 | 2026-07-24 | 71, 80, 83 | 1970-01-01 | 1970-01-01 |  |
| 86 | 1.6.21 | Testing the motor on load, and checking its output | 14d | 2026-07-20 | 2026-08-02 | 84 |  |  |  |
| 87 | 1.6.22 | Testing: HV contactor and other HV components | 3d | 2026-07-25 | 2026-07-27 | 85 | 1970-01-01 | 1970-01-01 |  |
| 88 | 1.6.23 | Make HV components IP rated, by making a enclosure/ ordering it. | 10d | 2026-07-28 | 2026-08-06 | 87 |  |  |  |
| 89 | 1.6.24 | Check the requirements for the display | 7d | 2026-06-01 | 2026-06-07 |  | 1970-01-01 | 1970-01-01 | must start on 2026-06-01 |
| 90 | 1.6.25 | Write Display code | 14d | 2026-06-08 | 2026-06-21 | 89 | 1970-01-01 | 1970-01-01 |  |
| 91 | 1.6.26 | Design and manufacture display mounts for the vehicle | 14d | 2026-07-10 | 2026-07-23 | 30, 92 | 1970-01-01 | 1970-01-01 |  |
| 92 | 1.6.27 | Crimp wires and lugs have to be ready | 7d | 2026-07-03 | 2026-07-09 | 77 | 1970-01-01 | 1970-01-01 |  |
| 93 | 1.6.28 | Wiring: Decide wiring of the vehicle | 14d | 2026-07-10 | 2026-07-23 | 92 | 1970-01-01 | 1970-01-01 |  |
| 94 | 1.6.29 | Group wires together and get wiring harnesses | 30d | 2026-07-24 | 2026-08-22 | 93 | 1970-01-01 | 1970-01-01 |  |
| 95 | 1.6.30 | Assembly of electrical circuit in the vehicle | 14d | 2026-08-23 | 2026-09-05 | 18, 90, 91, 94, 161 |  |  |  |
| 96 | 1.6.31 | Try to see if OBD can be implemented for other subsytems | 14d | 2026-09-06 | 2026-09-19 | 95 | 1970-01-01 | 1970-01-01 |  |
| 97 | 1.6.32 | Data Collection: Use OBD and send data to view in mobile | 14d | 2026-09-20 | 2026-10-03 | 96 | 1970-01-01 | 1970-01-01 |  |
| 98 | 1.6.33 | OBD Working | 14d | 2026-10-04 | 2026-10-17 | 97 |  |  |  |

| ID | WBS | Task | Duration | Start | Finish | Predecessors | Baseline 1 start | Baseline 1 finish | Constraint |
| --- | --- | --- | --- | --- | --- | --- | --- | --- | --- |
| 100 | 1.7 | **Suspension** | 102d | 2026-04-02 | 2026-07-24 |  | 2026-03-09 | 2026-08-25 | start no earlier than 2026-03-09 |
| 101 | 1.7.1 | Train Jrs | 7d | 2026-04-13 | 2026-04-19 | 184 |  |  |  |
| 102 | 1.7.2 | Study Textbooks | 7d | 2026-04-02 | 2026-04-08 |  |  |  | must start on 2026-04-02 |
| 103 | 1.7.3 | Decide which suspension to use | 3d | 2026-04-02 | 2026-04-04 |  |  |  | must start on 2026-04-02 |
| 104 | 1.7.4 | Decide wheelbase, ride height, trackwidth for the vehicle | 3d | 2026-04-05 | 2026-04-07 | 103 | 2026-03-09 | 2026-03-13 |  |
| 105 | 1.7.5 | Decide static camber, toe, castor and tyre dimensions | 3d | 2026-04-05 | 2026-04-07 | 103 | 2026-03-14 | 2026-03-18 |  |
| 106 | 1.7.6 | hard points iter 1 | 7d | 2026-04-09 | 2026-04-15 | 102, 104, 105 | 2026-03-19 | 2026-04-02 |  |
| 107 | 1.7.7 | Lotus Analysis iter 1 | 7d | 2026-04-08 | 2026-04-14 | 104, 105 | 2026-04-03 | 2026-04-17 |  |
| 108 | 1.7.8 | hard points iter 2 | 5d | 2026-05-02 | 2026-05-06 | 101, 106 | 2026-04-18 | 2026-05-02 |  |
| 109 | 1.7.9 | Lotus Analysis iter 2 | 5d | 2026-05-02 | 2026-05-06 | 101, 107 | 2026-05-03 | 2026-05-07 |  |
| 110 | 1.7.10 | hard points iter 3 | 3d | 2026-05-07 | 2026-05-09 | 108 | 2026-05-08 | 2026-06-06 |  |
| 111 | 1.7.11 | Lotus Analysis iter 3 | 3d | 2026-05-07 | 2026-05-09 | 109 | 2026-03-09 | 2026-03-13 |  |
| 112 | 1.7.12 | CAD Design of arms, knuckle, wheelhub | 10d | 2026-05-10 | 2026-05-19 | 110, 111 | 2026-06-12 | 2026-07-26 |  |
| 113 | 1.7.13 | Refine CAD designs based on Analysis results | 10d | 2026-05-25 | 2026-06-03 | 60 | 2026-07-27 | 2026-08-25 |  |
| 114 | 1.7.14 | Vendor Validation of Design | 20d | 2026-05-25 | 2026-06-13 | 60 |  |  |  |
| 115 | 1.7.15 | CAD Vehicle Assembly | 7d | 2026-06-04 | 2026-06-10 | 113 |  |  |  |
| 116 | 1.7.16 | Make mounts | 3d | 2026-06-04 | 2026-06-06 | 32, 113 |  |  |  |
| 117 | 1.7.17 | Procurement (Wheel Hubs & Knuckles, Laser Cut mounts) | 30d | 2026-06-11 | 2026-07-10 | 115, 116 |  |  |  |
| 118 | 1.7.18 | Procure Tubes | 20d | 2026-06-04 | 2026-06-23 | 113 |  |  |  |
| 119 | 1.7.19 | Design and Procure Jigs | 7d | 2026-06-04 | 2026-06-10 | 113 |  |  |  |
| 120 | 1.7.20 | Assemble Jigs | 5d | 2026-06-11 | 2026-06-15 | 119 |  |  |  |
| 121 | 1.7.21 | Notch suspension arms | 7d | 2026-06-24 | 2026-06-30 | 118, 120 |  |  |  |
| 122 | 1.7.22 | Assemble Suspension | 14d | 2026-07-11 | 2026-07-24 | 117, 121 |  |  |  |
| 124 | 1.8 | **Steering** | 119d | 2026-03-21 | 2026-07-29 |  | 2026-03-09 | 2026-09-27 | start no earlier than 2026-03-21 |
| 125 | 1.8.1 | Learning Time & Training juniors | 25d | 2026-03-29 | 2026-05-04 |  | 2026-03-09 | 2026-03-18 | must start on 2026-03-29 |
| 126 | 1.8.2 | Steering Calculations | 23d | 2026-05-10 | 2026-06-01 | 110 | 2026-06-07 | 2026-06-16 |  |
| 127 | 1.8.3 | Determine gear ratio of rack and pinion | 5d | 2026-06-02 | 2026-06-06 | 126 | 2026-06-17 | 2026-06-26 |  |
| 128 | 1.8.4 | Lotus simulations | 10d | 2026-06-07 | 2026-06-16 | 127 |  |  |  |
| 129 | 1.8.5 | Design steering column, steering wheel | 3d | 2026-03-21 | 2026-03-23 |  | 2026-06-27 | 2026-07-06 |  |
| 130 | 1.8.6 | CAD Assembly of the steering subsystem | 7d | 2026-07-07 | 2026-07-13 | 30, 61, 132 |  |  |  |
| 131 | 1.8.7 | Design mounts for all components | 3d | 2026-03-24 | 2026-03-26 | 129 | 2026-07-07 | 2026-07-21 |  |
| 132 | 1.8.8 | Placing the orders (rack and pinion, tie rods, heim joints) | 30d | 2026-06-07 | 2026-07-06 | 127 |  |  |  |
| 133 | 1.8.9 | Steering wheel and mounts manufacturing | 14d | 2026-03-27 | 2026-04-09 | 61, 131 |  |  |  |
| 134 | 1.8.10 | Assembly of steering subsystem | 5d | 2026-07-25 | 2026-07-29 | 122, 133 |  |  |  |

Notes:
- 122: Also depends on chassis welded

| ID | WBS | Task | Duration | Start | Finish | Predecessors | Baseline 1 start | Baseline 1 finish | Constraint |
| --- | --- | --- | --- | --- | --- | --- | --- | --- | --- |
| 136 | 1.9 | **Mechanical Powertrain** | 103d? | 2026-04-05 | 2026-07-28 |  | 2026-03-20 | 2026-06-28 | start no earlier than 2026-03-20 |
| 137 | 1.9.1 | Train Juniors | 10d | 2026-04-08 | 2026-04-17 | 183 |  |  |  |
| 138 | 1.9.2 | Read the rulebook, reference books, understand the subsystem | 7d | 2026-04-06 | 2026-04-12 |  |  |  | must start on 2026-04-06 |
| 139 | 1.9.3 | Required Calculations(Torque & rpm) | 12d | 2026-04-13 | 2026-05-06 | 138 |  |  |  |
| 140 | 1.9.4 | Explore Open Differential | 3d | 2026-05-28 | 2026-05-30 | 137, 138 |  |  | start no earlier than 2026-04-09 |
| 141 | 1.9.5 | Gear ratio calculations | 10d | 2026-05-21 | 2026-05-30 | 143 |  |  |  |
| 142 | 1.9.6 | Gear Type | 1d? | 2026-05-31 | 2026-05-31 | 141 |  |  |  |
| 143 | 1.9.7 | Motor Specs Finalise | 14d | 2026-05-07 | 2026-05-20 | 139 |  |  |  |
| 144 | 1.9.8 | Transmission (chain sprocket vs belt pulley) | 3d | 2026-06-01 | 2026-06-03 | 142 |  |  |  |
| 145 | 1.9.9 | Motor Procurement | 30d | 2026-05-21 | 2026-06-19 | 143 |  |  |  |
| 146 | 1.9.10 | Open Differential Selection | 2d | 2026-05-31 | 2026-06-01 | 140, 141 |  |  |  |
| 147 | 1.9.11 | Select driveshaft/ U-Joint | 2d | 2026-04-05 | 2026-04-06 | 103 |  |  |  |
| 148 | 1.9.12 | Gearbox Selection | 1d | 2026-06-02 | 2026-06-02 | 141, 143, 146 |  |  |  |
| 149 | 1.9.13 | Open Differential Procurement | 20d | 2026-06-03 | 2026-06-22 | 146, 148 |  |  |  |
| 150 | 1.9.14 | Gearbox Procurement | 30d | 2026-06-03 | 2026-07-02 | 148 |  |  |  |
| 151 | 1.9.15 | Driveshaft Procurement | 20d | 2026-06-03 | 2026-06-22 | 147, 148 |  |  |  |
| 152 | 1.9.16 | Decide chain sprocket / belt pulley gear ratios | 7d | 2026-05-31 | 2026-06-06 | 141 |  |  |  |
| 153 | 1.9.17 | Procure chain sprocket / belt pulley | 20d | 2026-06-07 | 2026-06-26 | 152 |  |  |  |
| 154 | 1.9.18 | Open Differential Design Procurement | 10d | 2026-06-03 | 2026-06-12 | 146, 148 |  |  |  |
| 155 | 1.9.19 | Gearbox Design Procurement | 15d | 2026-06-03 | 2026-06-17 | 148 |  |  |  |
| 156 | 1.9.20 | Driveshaft Design Procurement | 10d | 2026-06-03 | 2026-06-12 | 147, 148 |  |  |  |
| 157 | 1.9.21 | Motor Design Procurement | 12d | 2026-05-21 | 2026-06-01 | 143 |  |  |  |
| 158 | 1.9.22 | CAD Design of all equipments and CAD Assembly | 10d | 2026-06-18 | 2026-06-27 | 154, 155, 156, 157 |  |  |  |
| 159 | 1.9.23 | Design mounts (motor, gearbox, chain sprocket) | 7d | 2026-06-28 | 2026-07-04 | 158 |  |  |  |
| 160 | 1.9.24 | procure mounts (laser cut) | 14d | 2026-07-05 | 2026-07-18 | 159 |  |  |  |
| 161 | 1.9.25 | Assemble the subsystem (on chassis) | 10d | 2026-07-19 | 2026-07-28 | 46, 160 |  |  |  |

Notes:
- 139: Calculate torque and rpm (Peak and rated) based on gradability, top speed and acceleration
- 142: Helical vs Spur
- 144: Chain Sprocket vs CVT
- 147: Suspension k Ride height selection pe depend karta hai

| ID | WBS | Task | Duration | Start | Finish | Predecessors | Baseline 1 start | Baseline 1 finish | Constraint |
| --- | --- | --- | --- | --- | --- | --- | --- | --- | --- |
| 163 | 1.10 | **Finance & Procurement** | 331d? | 2026-03-10 | 2027-02-15 |  | 2026-03-15 | 2026-07-03 | start no earlier than 2026-03-15 |
| 164 | 1.10.1 | Vendor List | 5d | 2026-04-05 | 2026-04-09 |  |  |  | must start on 2026-04-05 |
| 165 | 1.10.2 | Reuseable Components Calculation | 3d | 2026-04-03 | 2026-04-05 |  |  |  | must start on 2026-04-03 |
| 166 | 1.10.3 | Hostel Accomodation, Mess Fee waiver calculation | 3d | 2026-04-03 | 2026-04-05 |  |  |  | must start on 2026-04-03 |
| 167 | 1.10.4 | Budget 2026-2027 | 27d? | 2026-03-10 | 2026-04-05 |  |  |  | must start on 2026-03-10 |
| 168 | 1.10.5 | Budget Proposal to Prof. | 10d | 2026-04-06 | 2026-04-15 | 167 |  |  |  |
| 169 | 1.10.6 | Budget Proposal to SAO | 30d | 2026-04-16 | 2026-05-27 | 168 |  |  |  |
| 170 | 1.10.7 | Procurement Phase Start | 1d? | 2026-05-15 | 2026-05-15 |  |  |  | must start on 2026-05-15 |
| 171 | 1.10.8 | Logistics/transport of vehicle | 14d | 2026-11-09 | 2026-11-22 |  |  |  | must start on 2026-11-09 |
| 172 | 1.10.9 | Hotel Accomadation at BAJA | 14d | 2026-12-01 | 2026-12-14 |  |  |  | must start on 2026-12-01 |
| 173 | 1.10.10 | Travel for the team | 7d | 2026-11-01 | 2026-11-07 |  |  |  | must start on 2026-11-01 |
| 174 | 1.10.11 | Cost report / Cost event BAJA | 30d | 2026-09-01 | 2026-09-30 |  |  |  | must start on 2026-09-01 |
| 175 | 1.10.12 | Bill Settlement and Reimbursement | 1d? | 2026-11-13 | 2026-11-13 |  |  |  | must start on 2026-11-13 |
| 176 | 1.10.13 | Finance Report | 1d? | 2027-02-15 | 2027-02-15 |  |  |  | must start on 2027-02-15 |
| 178 | 1.11 | **HR** | 65d? | 2026-02-14 | 2026-04-19 |  | 2026-02-14 | 2026-03-18 | start no earlier than 2026-02-14 |
| 179 | 1.11.1 | Announce Senior Team and PORs | 1d? | 2026-02-14 | 2026-02-14 |  | 2026-02-14 | 2026-02-14 |  |
| 180 | 1.11.2 | Event and Orientation | 21d | 2026-03-07 | 2026-03-27 | 179 | 2026-02-15 | 2026-03-07 | start no earlier than 2026-03-07 |
| 181 | 1.11.3 | Recruitment Form | 7d | 2026-03-28 | 2026-04-03 | 180 | 2026-03-08 | 2026-03-18 |  |
| 182 | 1.11.4 | Interview | 2d | 2026-04-04 | 2026-04-05 | 181 |  |  |  |
| 183 | 1.11.5 | Team Reveal and Induction | 2d | 2026-04-06 | 2026-04-07 | 182 |  |  |  |
| 184 | 1.11.6 | Team Formation | 5d | 2026-04-08 | 2026-04-12 | 183 |  |  |  |
| 185 | 1.11.7 | Permission for Hostel & Mess, and Credits | 15d? | 2026-04-05 | 2026-04-19 |  |  |  | must start on 2026-04-05 |
| 187 | 1.12 | **Testing** | 276d? | 2026-02-15 | 2026-11-29 |  | 2026-03-07 | 2026-05-05 | start no earlier than 2026-03-07 |
| 188 | 1.12.1 | Post season testing of '26 vehicle | 60d | 2026-03-07 | 2026-05-17 |  | 2026-03-07 | 2026-05-05 | start no earlier than 2026-03-07 |
| 189 | 1.12.2 | Make a pre season testing plan (for full vehicle) | 30d | 2026-08-01 | 2026-08-30 |  |  |  | must start on 2026-08-01 |
| 190 | 1.12.3 | Electrical Pre-TI | 2d | 2026-08-07 | 2026-08-08 | 86, 88 |  |  |  |
| 191 | 1.12.4 | Pre season testing of '27 vehicle | 90d | 2026-09-01 | 2026-11-29 | 95 |  |  | must start on 2026-09-01 |
| 193 | 1.12.5 | Sponsorship | 1d? | 2026-02-15 | 2026-02-15 |  |  |  | as late as possible |

Notes:
- 170: Straight Chassis Tube
